# Proyectos Payment 2025 - Nov

Schedule from MS Project, 2026-05-01 to 2026-11-27, A marks actual dates.

## Calendars

- Estándar: Mon-Fri 09:00-13:00, 15:00-19:00; Sat-Sun off. Exceptions (off unless hours are given): 2026-05-01 (1 de mayo), 2026-05-21 (21 de mayo), 2026-06-29 (San Pedro y san Pablo), 2026-07-16 (Virgen del Carmen), 2026-09-18 (Fiestas patrias).

## Resources

| Resource |
| --- |
| German |
| Erich |
| Johan |
| Ingenico |
| CoasinLogicalis |
| Getnet |
| Roberto |
| Viviana |
| 100 |
| Seba |
| Calvin |

## Schedule

| ID | WBS | Task | Type | Duration | Start | Finish | Predecessors | Complete | Remaining | Total slack | Constraint | Resources | Work | Actual work | Text1 |
| --- | --- | --- | --- | --- | --- | --- | --- | --- | --- | --- | --- | --- | --- | --- | --- |
| 1 | 1 | **Contrato de Desarrollo y soporte** |  | 146d? | 2026-05-01 A | 2026-11-27 |  | 62% | 55.38d? | 0d |  |  | 2006.4h | 656.33h |  |
| 2 | 1.1 | Inicio contrato | milestone | 0d | 2026-05-01 A | 2026-05-01 A |  | 100% |  |  | start no earlier than 2026-05-01 |  |  |  |  |
| 3 | 1.2 | **Desarrollo PinPad** |  | 113d? | 2026-05-04 A | 2026-10-13 |  | 54% | 51.68d? | 33d |  |  | 586h | 242h |  |
| 4 | 1.2.1 | **Autoinstalación sin ingreso TID -** |  | 19d? | 2026-05-04 A | 2026-05-29 | 2 | 44% | 10.56d? | 127d |  |  | 24h | 24h |  |
| 5 | 1.2.1.1 | Desarrollo y pruebas unitarias |  | 3d? | 2026-05-04 A | 2026-05-06 A |  | 100% |  |  | start no earlier than 2026-05-04 | Erich | 24h | 24h |  |
| 6 | 1.2.1.2 | Entrega a Getnet para pruebas en ver 1.30.31 | milestone | 0d | 2026-05-07 A | 2026-05-07 A | 5 | 100% |  |  | start no earlier than 2026-05-07 |  |  |  |  |
| 7 | 1.2.1.3 | Pruebas Getnet |  | 4d? | 2026-05-07 | 2026-05-12 | 6 |  |  | 139d | start no earlier than 2026-05-07 |  |  |  |  |
| 8 | 1.2.1.4 | Pruebas SMU |  | 1d? | 2026-05-28 A | 2026-05-28 A | 6 | 100% |  |  | start no earlier than 2026-05-28 |  |  |  |  |
| 9 | 1.2.1.5 | Paso a Piloto |  | 1d? | 2026-05-29 | 2026-05-29 | 8 |  |  | 127d |  |  |  |  |  |
| 10 | 1.2.2 | **Pago con QR** |  | 2d? | 2026-05-08 A | 2026-05-11 | 2 | 50% | 1d? | 140d |  |  | 1h | 1h | Luis |
| 11 | 1.2.2.1 | Reunión con Evertec |  | 1d? | 2026-05-08 A | 2026-05-08 A |  | 100% |  |  | start no earlier than 2026-05-08 | Erich [12.5%] | 1h | 1h |  |
| 12 | 1.2.2.2 | Recepción especificación |  | 1d? | 2026-05-11 | 2026-05-11 | 11 |  |  | 140d |  |  |  |  |  |
| 13 | 1.2.3 | **Cencosud** |  | 12d? | 2026-05-13 A | 2026-05-29 |  | 54% | 5.5d? | 127d |  |  | 18h | 18h |  |
| 14 | 1.2.3.1 | Reunión de equipo |  | 0.18d? | 2026-05-13 A | 2026-05-13 A |  | 100% |  |  | start no earlier than 2026-05-13 | Erich [37.5%]; Roberto | 2h | 2h |  |
| 15 | 1.2.3.2 | Se reagenda reunión para 28/05 |  | 1d? | 2026-05-28 A | 2026-05-28 A |  | 100% |  |  | start no earlier than 2026-05-28 | Erich; Roberto | 16h | 16h |  |
| 16 | 1.2.3.3 | Recepción de esp. De cambios |  | 1d? | 2026-05-29 | 2026-05-29 | 15 |  |  | 127d |  |  |  |  |  |
| 17 | 1.2.4 | **Optimización manejo de SIM** |  | 21d? | 2026-05-04 A | 2026-06-02 |  | 88% | 2.62d? | 125d |  |  | 40h | 40h | Raúl |
| 18 | 1.2.4.1 | Se realiza cambio sobre app 1.30.31 |  | 5d? | 2026-05-18 A | 2026-05-25 A |  | 100% |  |  | start no earlier than 2026-05-14 | Erich | 40h | 40h |  |
| 19 | 1.2.4.2 | Pruebas |  | 1d? | 2026-05-26 A | 2026-05-26 A | 18 | 100% |  |  |  |  |  |  |  |
| 20 | 1.2.4.3 | Entrega a Getnet para pruebas en ver 1.30.32 |  | 1d? | 2026-06-02 A | 2026-06-02 A | 19 | 100% |  |  | start no earlier than 2026-06-02 |  |  |  |  |
| 21 | 1.2.4.4 | <Tarea nueva> |  | 1d? | 2026-05-04 | 2026-05-04 |  |  |  | 145d |  |  |  |  |  |
| 22 | 1.2.5 | **Informe de Hacking Ético** |  | 3d? | 2026-05-15 A | 2026-05-19 A |  | 100% |  |  |  |  | 9h | 9h |  |
| 23 | 1.2.5.1 | Recepción de mail enviado por Luis |  | 0.12d? | 2026-05-15 A | 2026-05-15 A |  | 100% |  |  | start no earlier than 2026-05-15 |  | 1h | 1h |  |
| 24 | 1.2.5.2 | Analisis de la observación |  | 1d? | 2026-05-18 A | 2026-05-18 A | 23 | 100% |  |  |  | Erich | 8h | 8h |  |
| 25 | 1.2.5.3 | Envío de respuesta |  | 1d? | 2026-05-19 A | 2026-05-19 A | 24 | 100% |  |  |  |  |  |  |  |

Notes:
- 8: SMU envía mail con pruebas realizadas: / Release Note App Pinpad v1.30.31~/ ~/ 1.- Sincronización mejorada del búfer USB y proceso de ejecución de comandos en el pinpad./ 2.- Prevención de fugas de memoria y retorno a segundo plano manteniendo la conexión USB./ 3.- Cambio en proceso de autoinstalación, se minimiza la interacción con el usuario para el alta del pinpad en HEM y se elimina impresión de voucher en autoinstalacion./ 4.- Mejoras en la inicialización de la biblioteca SDK al iniciar la aplicación.
- 15: Se realiza reunión. Se estima que la app actual es un 95% compatible con lo que requiere Cencosud. Por ahora no hay compromiso de parte de Coasin
- 18: Nueva ver. 1.30.32
- 20: Se entrega app para pruebas de Luis
- 23: Erich, / ~~ Necesitamos que se puedan resolver la vulnerabilidad CHL-SAN-CYT-EH-OD-R0-2026-03-A11-01 que está en documento adjunto. / ~~ Quedamos atentos.
- 25: Erich envió mail a Luis con revisión realizada con Sebastian

| ID | WBS | Task | Type | Duration | Start | Finish | Predecessors | Complete | Remaining | Total slack | Free slack | Constraint | Resources | Work | Actual work |
| --- | --- | --- | --- | --- | --- | --- | --- | --- | --- | --- | --- | --- | --- | --- | --- |
| 26 | 1.2.6 | **Reinicio automático de app** |  | 7d? | 2026-06-04 A | 2026-06-12 |  | 80% | 1.4d? | 117d |  |  |  | 16h | 16h |
| 27 | 1.2.6.1 | Cambio por MDM |  | 1d? | 2026-06-04 A | 2026-06-04 A |  | 100% |  |  |  | start no earlier than 2026-06-04 | Roberto | 8h | 8h |
| 28 | 1.2.6.2 | Cambio por código |  | 1d? | 2026-06-04 A | 2026-06-04 A |  | 100% |  |  |  | start no earlier than 2026-06-04 | Erich | 8h | 8h |
| 29 | 1.2.6.3 | Se levanta caso a Ingenico |  | 1d? | 2026-06-05 A | 2026-06-05 A | 28 | 100% |  |  |  |  |  |  |  |
| 30 | 1.2.6.4 | Entrega versión a Luis 1.30.32 |  | 1d? | 2026-06-11 A | 2026-06-11 A | 29 | 100% |  |  |  | start no earlier than 2026-06-11 |  |  |  |
| 31 | 1.2.6.5 | Paso a producción |  | 1d? | 2026-06-12 | 2026-06-12 | 30 |  |  | 117d |  |  |  |  |  |
| 32 | 1.2.7 | **Incorporación de video y Términos y condiciones para Cencosud** |  | 43d? | 2026-05-29 A | 2026-07-30 A |  | 100% |  |  |  |  |  | 88h | 88h |
| 33 | 1.2.7.1 | Recepción solicitud | milestone | 0d | 2026-05-29 A | 2026-05-29 A |  | 100% |  |  |  | start no earlier than 2026-05-29 |  |  |  |
| 34 | 1.2.7.2 | implementación demo video |  | 1d? | 2026-06-02 A | 2026-06-02 A | 33, 56 | 100% |  |  |  |  | German | 8h | 8h |
| 35 | 1.2.7.3 | Entrega a Luis para su revisión |  | 1d? | 2026-06-03 A | 2026-06-03 A | 34 | 100% |  |  |  |  | Erich | 8h | 8h |
| 36 | 1.2.7.4 | nueva versión de TyC con modelo cencosud |  | 4d | 2026-06-12 A | 2026-06-17 A | 35 | 100% |  |  |  | start no earlier than 2026-06-12 | Erich | 32h | 32h |
| 37 | 1.2.7.5 | Transmisión de archivos, videos y pdf de la caja a DX6000 |  | 5d? | 2026-07-06 A | 2026-07-10 A | 36 | 100% |  |  |  | finish no earlier than 2026-07-10 | Erich | 40h | 40h |
| 38 | 1.2.7.6 | Entrega a Getnet |  | 1d? | 2026-07-13 A | 2026-07-13 A | 37 | 100% |  |  |  |  |  |  |  |
| 39 | 1.2.7.7 | Presentación de Getnet a Cencosud |  | 1d? | 2026-07-30 A | 2026-07-30 A | 38 | 100% |  |  |  | start no earlier than 2026-07-30 |  |  |  |
| 40 | 1.2.8 | **Nuevo tratamiento para Tarjetas internacionales** |  | 28d? | 2026-07-29 A | 2026-09-04 |  | 43% | 16d? | 59d |  |  | Erich | 224h |  |
| 41 | 1.2.8.1 | Recepción solicitud | milestone | 0d | 2026-07-29 A | 2026-07-29 A |  | 100% |  |  |  | start no earlier than 2026-07-30 |  |  |  |
| 42 | 1.2.8.2 | Preparación de demo |  | 1d? | 2026-07-30 A | 2026-07-30 A | 41 | 100% |  |  |  |  |  |  |  |
| 43 | 1.2.8.3 | Entrega a Getnet |  | 1d? | 2026-07-30 A | 2026-07-30 A | 42 | 100% |  |  |  |  |  |  |  |
| 44 | 1.2.8.4 | Recepción de especificación del cambio de flujo |  | 1d? | 2026-08-06 | 2026-08-06 | 43 |  |  | 4d | 0d | start no earlier than 2026-08-06 |  |  |  |
| 45 | 1.2.8.5 | Revisión y estimación |  | 0.5d | 2026-08-07 | 2026-08-07 | 44 |  |  | 4d | 0d |  |  |  |  |
| 46 | 1.2.8.6 | Desarrollo y pruebas |  | 4d | 2026-08-07 | 2026-08-13 | 45 |  |  | 4d | 0d |  |  |  |  |
| 47 | 1.2.8.7 | Entrega a Getnet en ver 1.30.33 |  | 0.5d | 2026-08-13 | 2026-08-13 | 46 |  |  | 4d |  |  |  |  |  |
| 48 | 1.2.8.8 | **Problema con Tj internacionales con más de una app** |  | 12d? | 2026-08-20 A | 2026-09-04 | 47 | 67% | 4d? | 59d |  |  |  |  |  |
| 49 | 1.2.8.8.1 | Recepción de solicitud |  | 1d? | 2026-08-20 A | 2026-08-20 A |  | 100% |  |  |  | start no earlier than 2026-08-20 |  |  |  |
| 50 | 1.2.8.8.2 | Cambios en app |  | 1d? | 2026-08-21 A | 2026-08-21 A | 49 | 100% |  |  |  |  |  |  |  |
| 51 | 1.2.8.8.3 | Entrega a Getnet |  | 1d? | 2026-08-24 A | 2026-08-24 A | 50 | 100% |  |  |  |  |  |  |  |
| 52 | 1.2.8.8.4 | Reunión para revisar pantallas |  | 1d? | 2026-09-02 A | 2026-09-02 A | 51 | 100% |  |  |  | start no earlier than 2026-09-02 |  |  |  |
| 53 | 1.2.8.8.5 | Corregir problema con time out TJ insertada |  | 1d? | 2026-09-03 | 2026-09-03 | 52 |  |  | 59d | 0d |  |  |  |  |
| 54 | 1.2.8.8.6 | Firma app 1.30.33 para piloto |  | 1d? | 2026-09-04 | 2026-09-04 | 53 |  |  | 59d |  |  |  |  |  |

Notes:
- 29: Se levanta caso a Ingenico porque no funciona lo indicado por ellos
- 35: Se entrega video con demo y app a Luis
- 41: Luis llamó a Erich para hacerle la solicitud

| ID | WBS | Task | Type | Duration | Start | Finish | Predecessors | Complete | Remaining | Total slack | Free slack | Constraint | Resources | Work | Actual work |
| --- | --- | --- | --- | --- | --- | --- | --- | --- | --- | --- | --- | --- | --- | --- | --- |
| 55 | 1.2.9 | **RX5000 como pinpad - retoma** |  | 62d? | 2026-05-04 | 2026-07-31 |  |  |  | 84d |  |  |  | 80h |  |
| 56 | 1.2.9.1 | Recepción solicitud | milestone | 0d | 2026-06-02 | 2026-06-02 |  |  |  | 114d | 0d | start no earlier than 2026-06-02 |  |  |  |
| 57 | 1.2.9.2 | Revisión estado actual |  | 1d? | 2026-06-02 | 2026-06-02 | 56 |  |  | 114d | 0d |  |  |  |  |
| 58 | 1.2.9.3 | implementación |  | 1d? | 2026-06-03 | 2026-06-03 | 57 |  |  | 114d | 30d |  |  |  |  |
| 59 | 1.2.9.4 | Comunicación bluetooth entre DX6000 y RX5000 |  | 10d | 2026-07-20 | 2026-07-31 | 58 |  |  | 84d |  | start no earlier than 2026-07-20 | Erich | 80h |  |
| 60 | 1.2.9.5 | <Tarea nueva> |  | 1d? | 2026-05-04 | 2026-05-04 |  |  |  | 145d |  |  |  |  |  |
| 61 | 1.2.9.6 | <Tarea nueva> |  | 1d? | 2026-05-04 | 2026-05-04 |  |  |  | 145d |  |  |  |  |  |
| 62 | 1.2.10 | **SX7000** |  | 34d? | 2026-06-30 A | 2026-08-17 |  | 84% | 5.55d? | 73d |  |  |  | 18h | 18h |
| 63 | 1.2.10.1 | Revisión de Ingenico de problemas presentados |  | 1d? | 2026-06-30 A | 2026-06-30 A |  | 100% |  |  |  | start no earlier than 2026-06-23 | Seba | 8h | 8h |
| 64 | 1.2.10.2 | Reunión de Seba con Erich para revisar cambios que hay que hacer en la app de pinpad |  | 1h | 2026-07-06 A | 2026-07-06 A | 63 | 100% |  |  |  | start no earlier than 2026-07-06 | Erich; Seba | 2h | 2h |
| 65 | 1.2.10.3 | **Retoma por priorización de Luis** |  | 4d? | 2026-07-31 A | 2026-08-05 A |  | 100% |  |  |  |  |  | 8h | 8h |
| 66 | 1.2.10.3.1 | Armar UNS para el equipo |  | 1d? | 2026-07-31 A | 2026-07-31 A | 64 | 100% |  |  |  | start no earlier than 2026-07-31 |  |  |  |
| 67 | 1.2.10.3.2 | **Demo SX7000** |  | 3d? | 2026-08-03 A | 2026-08-05 A |  | 100% |  |  |  |  |  | 8h | 8h |
| 68 | 1.2.10.3.2.1 | Cambios en app |  | 1d? | 2026-08-03 A | 2026-08-03 A | 66 | 100% |  |  |  | start no earlier than 2026-07-07 | Erich | 8h | 8h |
| 69 | 1.2.10.3.2.2 | Pruebas |  | 1d? | 2026-08-04 A | 2026-08-04 A | 68 | 100% |  |  |  |  |  |  |  |
| 70 | 1.2.10.3.2.3 | Entrega a Getnet |  | 1d? | 2026-08-05 A | 2026-08-05 A | 69 | 100% |  |  |  |  |  |  |  |
| 71 | 1.2.10.4 | Getnet informa que no va a trabajar con SX7000 |  | 1d? | 2026-08-17 | 2026-08-17 | 69 |  |  | 73d |  | start no earlier than 2026-08-17 |  |  |  |
| 72 | 1.2.11 | **App con baudios 19200 en duro** |  | 0.38d | 2026-08-06 A | 2026-08-06 A |  | 100% |  |  |  |  |  |  |  |
| 73 | 1.2.11.1 | recepción de solicitud | milestone | 0d | 2026-08-06 A | 2026-08-06 A |  | 100% |  |  |  | start no earlier than 2026-08-06 |  |  |  |
| 74 | 1.2.11.2 | implementación del cambio |  | 2h | 2026-08-06 A | 2026-08-06 A | 73 | 100% |  |  |  |  |  |  |  |
| 75 | 1.2.11.3 | firma app |  | 1h | 2026-08-06 A | 2026-08-06 A | 74 | 100% |  |  |  |  |  |  |  |
| 76 | 1.2.11.4 | Entrega a Getnet en ver 1.30.32 | milestone | 0d | 2026-08-06 A | 2026-08-06 A | 75 | 100% |  |  |  |  |  |  |  |
| 77 | 1.2.12 | **App con baudios parametrizados** |  | 6.56d | 2026-08-05 A | 2026-08-13 |  | 90% | 0.66d | 75.44d |  |  |  |  |  |
| 78 | 1.2.12.1 | recepción de solicitud | milestone | 0d | 2026-08-05 A | 2026-08-05 A |  | 100% |  |  |  | start no earlier than 2026-08-05 |  |  |  |
| 79 | 1.2.12.2 | Desarrollo y pruebas |  | 5d | 2026-08-06 A | 2026-08-12 A | 78 | 100% |  |  |  | start no earlier than 2026-08-06 |  |  |  |
| 80 | 1.2.12.3 | firma app |  | 0.5h | 2026-08-13 | 2026-08-13 | 79 |  |  | 75.44d | 0d |  |  |  |  |
| 81 | 1.2.12.4 | Entrega a Getnet ver 1.30.33 |  | 0.5d | 2026-08-13 | 2026-08-13 | 80 |  |  | 75.44d |  |  |  |  |  |

Notes:
- 56: Roberto habló con Luis y Luis le dijo que estaba pensando poner este equipo en un comercio
- 59: Android 11. Requirió ajustes en los permisos de las librerias
- 62: Getnet infomó que no va a trabajar con SX7000
- 68: Una vez que funcione la app hay que ver que ajustes funcionales hay que hacer. Pantallas y flujos
- 70: Le gustó la demo a Luis. Tenemos que ver los siguientes puntos: / - cable / - audio / - versión inclusiva / - Preguntaron si es tamaño standar

| ID | WBS | Task | Type | Duration | Start | Finish | Predecessors | Complete | Remaining | Total slack | Free slack | Constraint | Resources | Work | Actual work |
| --- | --- | --- | --- | --- | --- | --- | --- | --- | --- | --- | --- | --- | --- | --- | --- |
| 82 | 1.2.13 | **Problema con MDM** |  | 43d? | 2026-08-10 A | 2026-10-08 |  | 99% | 0d? | 36d |  |  |  | 28h | 28h |
| 83 | 1.2.13.1 | Inicio |  | 1d? | 2026-08-10 A | 2026-08-10 A |  | 100% |  |  |  | start no earlier than 2026-08-10 |  |  |  |
| 84 | 1.2.13.2 | Reunión con Ingenico |  | 1d? | 2026-08-12 A | 2026-08-12 A | 83 | 100% |  |  |  | finish no earlier than 2026-08-12 |  |  |  |
| 85 | 1.2.13.3 | Desarrollo y pruebas |  | 1.5d | 2026-08-13 A | 2026-08-14 A | 84 | 100% |  |  |  |  | German | 12h | 12h |
| 86 | 1.2.13.4 | Informado a Luis | milestone | 0d | 2026-08-14 A | 2026-08-14 A | 85 | 100% |  |  |  | start no earlier than 2026-08-14 | Erich |  |  |
| 87 | 1.2.13.5 | Mostrar solución a Luis | milestone | 0d | 2026-08-14 | 2026-08-14 | 86 |  |  | 74.5d |  |  |  |  |  |
| 88 | 1.2.13.6 | Firma de apk unificado para activar app aut. |  | 1d? | 2026-09-15 A | 2026-09-15 A |  | 100% |  |  |  | start no earlier than 2026-09-15 |  |  |  |
| 89 | 1.2.13.7 | Firma de apk para desbloquear app aut. |  | 1d? | 2026-09-15 A | 2026-09-15 A |  | 100% |  |  |  | start no earlier than 2026-09-15 |  |  |  |
| 90 | 1.2.13.8 | Configuración en producción |  | 1d? | 2026-09-16 A | 2026-09-16 A | 88, 89 | 100% |  |  |  | start no earlier than 2026-09-07 | Erich; Roberto | 16h | 16h |
| 91 | 1.2.13.9 | Revisar script por comportamiento extraño |  | 1d? | 2026-10-08 A | 2026-10-08 A | 90 | 100% |  |  |  | start no earlier than 2026-10-08 |  |  |  |
| 92 | 1.2.14 | **Despliegue datos Comercio en engranaje** |  | 5d? | 2026-09-04 A | 2026-09-10 |  | 71% | 1.43d? | 55d |  |  |  |  |  |
| 93 | 1.2.14.1 | Recepción de solicitud | milestone | 0d | 2026-09-04 A | 2026-09-04 A |  | 100% |  |  |  | start no earlier than 2026-09-04 |  |  |  |
| 94 | 1.2.14.2 | Desarrollo y pruebas |  | 1.5d | 2026-09-07 A | 2026-09-08 A | 93 | 100% |  |  |  | finish no earlier than 2026-09-08 |  |  |  |
| 95 | 1.2.14.3 | Entrega a Getnet |  | 0.5d | 2026-09-09 A | 2026-09-09 A | 94 | 100% |  |  |  |  |  |  |  |
| 96 | 1.2.14.4 | Firma app 1.30.33 |  | 0.5d | 2026-09-09 A | 2026-09-09 A | 95 | 100% |  |  |  |  |  |  |  |
| 97 | 1.2.14.5 | Instalación en Piloto |  | 1d? | 2026-09-10 | 2026-09-10 | 96 |  |  | 55d |  |  |  |  |  |
| 98 | 1.2.15 | **Incorporar Wallet Lider BCI On Us** |  | 17d? | 2026-09-21 A | 2026-10-13 |  |  | 17d? | 33d |  |  |  |  |  |
| 99 | 1.2.15.1 | Solicitud de requerimiento | milestone | 0d | 2026-09-21 A | 2026-09-21 A |  | 100% |  |  |  | start no earlier than 2026-09-21 |  |  |  |
| 100 | 1.2.15.2 | Revisión |  | 0.5d | 2026-09-21 | 2026-09-21 | 99 |  |  | 47.5d | 0d |  |  |  |  |
| 101 | 1.2.15.3 | Entrega de respuesta Getnet |  | 1d? | 2026-09-21 | 2026-09-22 | 100 |  |  | 47.5d | 0d |  |  |  |  |
| 102 | 1.2.15.4 | Error en Pago con Teléfono en caja Getnet |  | 1d? | 2026-10-13 | 2026-10-13 |  |  |  | 33d |  | start no earlier than 2026-10-13 |  |  |  |
| 103 | 1.2.16 | **Proyecto Cencosud** |  | 9.5d? | 2026-09-22 | 2026-10-05 | 101 |  |  | 39d |  |  |  |  |  |
| 104 | 1.2.16.1 | Inicio Proyecto |  | 1d? | 2026-10-05 | 2026-10-05 |  |  |  | 39d |  | start no earlier than 2026-10-05 |  |  |  |
| 105 | 1.2.16.2 | <Tarea nueva> |  | 1d? | 2026-09-22 | 2026-09-23 |  |  |  | 47.5d |  |  |  |  |  |
| 106 | 1.2.16.3 | <Tarea nueva> |  | 1d? | 2026-09-22 | 2026-09-23 |  |  |  | 47.5d |  |  |  |  |  |
| 107 | 1.2.16.4 | <Tarea nueva> |  | 1d? | 2026-09-22 | 2026-09-23 |  |  |  | 47.5d |  |  |  |  |  |
| 108 | 1.2.16.5 | <Tarea nueva> |  | 1d? | 2026-09-22 | 2026-09-23 |  |  |  | 47.5d |  |  |  |  |  |

Notes:
- 84: Ingenico propone implementar MDM local como forma de solucionar el problema
- 90: Se configurará para descarga desde HEM y Roberto revisará con Carlos el cambio a UNS de laboratorio
- 91: Roberto hizo nuevas pruebas y está OK
- 100: Se revisó y se están enviando bien los datos. Deben revisar

| ID | WBS | Task | Type | Duration | Start | Finish | Predecessors | Complete | Remaining | Total slack | Free slack | Constraint | Resources | Work | Actual work | Text1 |
| --- | --- | --- | --- | --- | --- | --- | --- | --- | --- | --- | --- | --- | --- | --- | --- | --- |
| 109 | 1.2.17 | **Solicitud de información técnica de DX6000** |  | 105.5d? | 2026-05-04 | 2026-10-02 |  |  |  | 40.5d |  |  |  | 40h |  |  |
| 110 | 1.2.17.1 | recepción de solicitud | milestone | 0d | 2026-09-24 | 2026-09-24 |  |  |  | 40.5d | 0d | start no earlier than 2026-09-24 |  |  |  |  |
| 111 | 1.2.17.2 | envío de mail con User guide del equipo |  | 0.5d | 2026-09-24 | 2026-09-24 | 110 |  |  | 40.5d | 0d |  |  |  |  |  |
| 112 | 1.2.17.3 | espera de comentarios de Getnet | milestone | 0d | 2026-09-24 | 2026-09-24 | 111 |  |  | 40.5d | 0d |  |  |  |  |  |
| 113 | 1.2.17.4 | Preparación de Manual |  | 5d | 2026-09-24 | 2026-10-01 | 112 |  |  | 40.5d | 0d |  | Roberto | 40h |  |  |
| 114 | 1.2.17.5 | <Tarea nueva> |  | 1d? | 2026-10-01 | 2026-10-02 | 113 |  |  | 40.5d |  |  |  |  |  |  |
| 115 | 1.2.17.6 | <Tarea nueva> |  | 1d? | 2026-05-04 | 2026-05-04 |  |  |  | 145d |  |  |  |  |  |  |
| 116 | 1.2.17.7 | <Tarea nueva> |  | 1d? | 2026-05-04 | 2026-05-04 |  |  |  | 145d |  |  |  |  |  |  |
| 117 | 1.3 | **Desarrollo POS** |  | 81d? | 2026-05-14 A | 2026-09-08 |  | 96% | 3.52d? | 57d |  |  |  | 816h | 10.67h |  |
| 118 | 1.3.1 | **Reseteo de nro. de comprobante en el cierre** |  | 51d? | 2026-05-14 A | 2026-07-28 |  | 99% | 0d? | 0d |  |  | German; Viviana | 816h | 10.67h | Raúl |
| 119 | 1.3.1.1 | Se realiza cambio en app 2.5.024 |  | 1d? | 2026-05-14 A | 2026-05-14 A |  | 100% |  |  |  | start no earlier than 2026-05-14 |  |  |  |  |
| 120 | 1.3.1.2 | Pruebas |  | 1d? | 2026-05-15 A | 2026-05-15 A | 119 | 100% |  |  |  |  |  |  |  |  |
| 121 | 1.3.1.3 | Envío de mail a Raúl avisando que está OK |  | 1d? | 2026-05-19 A | 2026-05-19 A | 120 | 100% |  |  |  | start no earlier than 2026-05-19 |  |  |  |  |
| 122 | 1.3.1.4 | Recepción de observaciones |  | 1d? | 2026-05-22 A | 2026-05-22 A | 121 | 100% |  |  |  | start no earlier than 2026-05-22 |  |  |  |  |
| 123 | 1.3.1.5 | Reunión de aclaración de observaciones |  | 1d? | 2026-05-27 A | 2026-05-27 A | 122 | 100% |  |  |  | start no earlier than 2026-05-27 |  |  |  |  |
| 124 | 1.3.1.6 | Entrega ver 2.5.025 para revisión |  | 1d? | 2026-06-03 A | 2026-06-03 A | 123 | 100% |  |  |  | start no earlier than 2026-06-03 |  |  |  |  |
| 125 | 1.3.1.7 | Recepción de mail con observaciones encontradas |  | 1d? | 2026-06-09 A | 2026-06-09 A | 124 | 100% |  |  |  | start no earlier than 2026-06-09 |  |  |  |  |
| 126 | 1.3.1.8 | Recepción de link con simuladores |  | 1d? | 2026-06-16 A | 2026-06-16 A | 125 | 100% |  |  |  | start no earlier than 2026-06-16 |  |  |  |  |
| 127 | 1.3.1.9 | Correcciones |  | 1d? | 2026-06-17 A | 2026-06-17 A | 126 | 100% |  |  |  |  |  |  |  |  |
| 128 | 1.3.1.10 | Pruebas |  | 1d? | 2026-06-18 A | 2026-06-18 A | 127 | 100% |  |  |  |  |  |  |  |  |
| 129 | 1.3.1.11 | Entrega ver. 2.5.026 |  | 1d? | 2026-06-19 A | 2026-06-19 A | 128 | 100% |  |  |  |  |  |  |  |  |
| 130 | 1.3.1.12 | Entrega nueva ver. 2.5.026 |  | 1d? | 2026-06-25 A | 2026-06-25 A | 129 | 100% |  |  |  |  |  |  |  |  |
| 131 | 1.3.1.13 | Recepción de observaciones |  | 1d? | 2026-06-26 A | 2026-06-26 A | 130 | 100% |  |  |  |  |  |  |  |  |
| 132 | 1.3.1.14 | Reunión de aclaración de observaciones |  | 2h | 2026-07-01 A | 2026-07-01 A | 131 | 100% |  |  |  | start no earlier than 2026-07-01 |  |  |  |  |
| 133 | 1.3.1.15 | Corrección de observaciones |  | 1.5d | 2026-07-01 A | 2026-07-02 A | 132 | 100% |  |  |  |  |  |  |  |  |
| 134 | 1.3.1.16 | Entrega nueva ver. 2.5.026 | milestone | 0d | 2026-07-02 A | 2026-07-02 A | 133 | 100% |  |  |  |  |  |  |  |  |
| 135 | 1.3.1.17 | Reunión de aclaración de observaciones |  | 2h | 2026-07-09 A | 2026-07-09 A | 134 | 100% |  |  |  | start no earlier than 2026-07-09 |  |  |  |  |
| 136 | 1.3.1.18 | Correcciones |  | 1d? | 2026-07-09 A | 2026-07-10 A | 135 | 100% |  |  |  |  |  |  |  |  |
| 137 | 1.3.1.19 | Revisión |  | 1d? | 2026-07-10 A | 2026-07-13 A | 136 | 100% |  |  |  |  |  |  |  |  |
| 138 | 1.3.1.20 | Recepción observación impresión voucher copia cliente para a2a |  | 1d? | 2026-07-20 A | 2026-07-20 A | 137 | 100% |  |  |  | start no earlier than 2026-07-20 |  |  |  |  |
| 139 | 1.3.1.21 | Migración de terminal de Maca a HEM |  | 1d? | 2026-07-27 A | 2026-07-27 A | 138 | 100% |  |  |  | start no earlier than 2026-07-27 |  |  |  |  |
| 140 | 1.3.1.22 | Aprobación de Getnet |  | 1d? | 2026-07-28 A | 2026-07-28 A | 139 | 100% |  |  |  |  |  |  |  |  |
| 141 | 1.3.2 | Firma app 2.5.026 e instalación en Prod |  | 1d? | 2026-07-29 A | 2026-07-29 A | 140 | 100% |  |  |  | start no earlier than 2026-07-29 |  |  |  |  |
| 142 | 1.3.3 | Instalación en WOM |  | 1d? | 2026-08-04 A | 2026-08-04 A | 141 | 100% |  |  |  | start no earlier than 2026-08-04 |  |  |  |  |
| 143 | 1.3.4 | Masificación de app |  | 1d? | 2026-09-08 | 2026-09-08 | 142 |  |  | 57d |  | start no earlier than 2026-09-08 |  |  |  |  |

Notes:
- 118: [10:09, 14/5/2026] Raul Bustamante: Viví. Otra consulta / Me siguen reclamando que en Ingenico el número de comprobante se resetea a uno en cada cierre / Eso se había pedido corregir hace tiempo!!! / Hay comercios que no les sirve esa modalidad y piden cambio de equipo / Esa solicitud quedó pendiente??? / [10:10, 14/5/2026] Raul Bustamante: Lo probé en la 2.5.023 y se resetea a 1 / [11:20, 14/5/2026] ViviLavin: Y que debiera hacerse con el NRO de comprobante entonces?? / [11:30, 14/5/2026] Raul Bustamante: No resetearlo a 1 después del cierre / [14:33, 14/5/2026] ViviLavin: Raúl, estuvimos revisando y haciendo pruebas con varias versiones, 2.1.9, 2.2.8, 2.3.014, qué son las que tienen más terminales y la 2.5.023 y en ninguna de ellas está el cambio de que el cierre no resetee el nro. de comprobante, es decir, en todas ellas, el nro. de comprobante después del cierre vuelve a 1. ¿hacemos el cambio?. no es invasivo. Cuéntame
- 119: Se hicieron pruebas con varias versiones y esto nunca salió a la calle. Raúl decide hacer cambio en última versión con los cambios que se estaban realizando
- 126: Fran nos compartió simuladores / https://drive.google.com/drive/folders/1lEI-_EYqZgLiskXbaLSvGg4L0XD2cCj-?usp=drive_link
- 139: Se realizó cambio a HEM ya que TEM tenía problema de Licencia
- 143: Estimados / Buenas tardes. 78.921.690-8 WOM, realizó pruebas con la nueva versión, quedó conforme y ahora nos solicita masificar a todas sus terminales a la campaña de la versión 2.5.026 / Necesita que el jueves los equipos partan con esta actualización, por ello, nos piden que de madrugada se actualice, adjunto mail / Quedo atenta a su confirmación / Marlene Araya G./ Ejecutivo Post Venta

| ID | WBS | Task | Type | Duration | Start | Finish | Predecessors | Complete | Remaining | Total slack | Constraint | Resources | Work | Actual work | Text1 |
| --- | --- | --- | --- | --- | --- | --- | --- | --- | --- | --- | --- | --- | --- | --- | --- |
| 144 | 1.4 | **Desarrollo API** |  | 124d? | 2026-06-04 A | 2026-11-27 |  | 56% | 54.27d? | 0d |  |  | 225.4h | 155h |  |
| 145 | 1.4.1 | Retoma | milestone | 0d | 2026-06-04 A | 2026-06-04 A |  | 100% |  |  | start no earlier than 2026-06-04 |  |  |  |  |
| 146 | 1.4.2 | Reuniones de trabajo con Calvin |  | 12d | 2026-06-04 A | 2026-06-19 A | 145 | 100% |  |  | start no earlier than 2026-06-04 | German [50%] | 48h | 48h |  |
| 147 | 1.4.3 | Prueba exitosa de Alta de TID por API | milestone | 0d | 2026-06-19 A | 2026-06-19 A | 145 | 100% |  |  | start no earlier than 2026-06-19 | German |  |  |  |
| 148 | 1.4.4 | Reunión kickoff Pruebas UAT |  | 1h | 2026-06-30 A | 2026-06-30 A | 147 | 100% |  |  | start no earlier than 2026-06-30 | Viviana | 1h | 1h |  |
| 149 | 1.4.5 | Reunión de seguimiento diario | milestone | 0d | 2026-07-17 | 2026-07-17 | 148 |  |  | 94d | finish no earlier than 2026-07-17 | German [6.2%]; Viviana [6.2%] |  |  |  |
| 150 | 1.4.6 | Pruebas ciclo 1 |  | 3d | 2026-07-01 A | 2026-07-03 A | 148 | 100% |  |  | start no earlier than 2026-07-01 | German [50%] | 12h | 12h |  |
| 151 | 1.4.7 | Problema en HEM para importar datos al estate |  | 1d? | 2026-07-03 A | 2026-07-03 A | 150SS+2d | 100% |  |  |  |  |  |  |  |
| 152 | 1.4.8 | correcciones y pruebas |  | 5d | 2026-07-06 A | 2026-07-10 A | 150 | 100% |  |  |  | German [50%] | 20h | 20h |  |
| 153 | 1.4.9 | Subida de cambios a ambiente UAT GetTech | milestone | 0d | 2026-07-13 A | 2026-07-13 A | 152 | 100% |  |  |  | Calvin |  |  |  |
| 154 | 1.4.10 | Pruebas |  | 5d | 2026-07-13 A | 2026-07-21 A | 153 | 100% |  |  |  | German [50%] | 20h | 20h |  |
| 155 | 1.4.11 | Soporte/consultas |  | 7d? | 2026-07-22 A | 2026-07-30 A | 154 | 100% |  |  | start no earlier than 2026-07-22 |  | 5h | 5h |  |
| 156 | 1.4.12 | Apoyo en pruebas, revisión y otros Agosto |  | 21d | 2026-08-03 A | 2026-08-31 A | 155 | 100% |  |  | start no earlier than 2026-08-03 | German [20.2%] | 34h | 34h |  |
| 157 | 1.4.13 | Apoyo en pruebas, revisión y otros Septiembre |  | 3d | 2026-09-01 A | 2026-09-03 A | 156 | 100% |  |  | finish no earlier than 2026-09-03 | German [37.5%] | 9h | 9h |  |
| 158 | 1.4.14 | Apoyo en pruebas, revisión y otros Septiembre 2 |  | 2d? | 2026-09-07 A | 2026-09-08 A | 156 | 100% |  |  | finish no earlier than 2026-09-11 | German [37.5%] | 6h | 6h |  |
| 159 | 1.4.15 | Recepción de informe de EH |  | 1d? | 2026-09-08 A | 2026-09-08 A |  | 100% |  |  | start no earlier than 2026-09-08 |  |  |  |  |
| 160 | 1.4.16 | Termino de ejecución casos de prueba |  | 4d | 2026-09-14 A | 2026-09-17 A | 158 | 100% |  |  | start no earlier than 2026-09-14 |  |  |  |  |
| 161 | 1.4.17 | Apoyo en pruebas, revisión y otros Octubre |  | 1h | 2026-10-07 A | 2026-10-07 A |  | 100% |  |  | start no earlier than 2026-10-07 |  |  |  |  |
| 162 | 1.4.18 | Preparación paso a producción |  | 5d | 2026-09-21 | 2026-09-25 | 160 |  |  | 0d | start no earlier than 2026-09-21 |  |  |  |  |
| 163 | 1.4.19 | Sign-off |  | 1d | 2026-09-28 | 2026-09-28 | 162 |  |  | 0d |  |  |  |  |  |
| 164 | 1.4.20 | Soporte productivo |  | 44d? | 2026-09-29 | 2026-11-27 | 163 |  |  | 0d | start no earlier than 2026-09-29 | German [20%] | 70.4h |  |  |
| 165 | 1.5 | **Soporte** |  | 113.5d? | 2026-05-04 A | 2026-10-14 | 2 | 72% | 32.08d? | 32.5d |  |  | 379h | 248.67h |  |
| 166 | 1.5.1 | Soporte Walmart por instalaciones |  | 0.25d? | 2026-05-08 A | 2026-05-08 A |  | 100% |  |  | start no earlier than 2026-05-08 | Roberto | 2h | 2h |  |
| 167 | 1.5.2 | Actualización Numero Comercio TEM-HEM - PROD 11-05 |  | 0.12d? | 2026-05-11 A | 2026-05-11 A |  | 100% |  |  | start no earlier than 2026-05-11 | German | 1h | 1h | Fran |
| 168 | 1.5.3 | Actualización Numero Comercio TEM-HEM - PROD 12-05 |  | 0.12d? | 2026-05-12 A | 2026-05-12 A |  | 100% |  |  | start no earlier than 2026-05-12 | German | 1h | 1h | Fran |
| 169 | 1.5.4 | Reseteo de nro. de comprobante en el cierre |  | 0.25d? | 2026-05-14 A | 2026-05-14 A |  | 100% |  |  | start no earlier than 2026-05-14 | German; Viviana | 4h | 4h | Raúl |
| 170 | 1.5.5 | Actualización Numero Comercio TEM-HEM - PROD 12-05 |  | 0.12d? | 2026-05-14 A | 2026-05-14 A |  | 100% |  |  | start no earlier than 2026-05-12 | German | 1h | 1h | Fran |

Notes:
- 150: Calvin requiere que German trabaje en las pruebas ciclo 1, 4 horas diarias por 7 días
- 151: Reportado a Ingenico 03/07
- 152: Pruebas en conjunto con Getnet
- 154: Pruebas en conjunto con Getnet
- 158: Se había detectado un problema con la autorización de las txs. con la app deIoneTech y se aclaro que el problema no está en nuestro desarrollo ni en HEM. Había sido un problema en la configuración de las credenciales
- 159: Calvin nos compartió informe de EH.
- 169: [10:09, 14/5/2026] Raul Bustamante: Viví. Otra consulta / Me siguen reclamando que en Ingenico el número de comprobante se resetea a uno en cada cierre / Eso se había pedido corregir hace tiempo!!! / Hay comercios que no les sirve esa modalidad y piden cambio de equipo / Esa solicitud quedó pendiente??? / [10:10, 14/5/2026] Raul Bustamante: Lo probé en la 2.5.023 y se resetea a 1 / [11:20, 14/5/2026] ViviLavin: Y que debiera hacerse con el NRO de comprobante entonces?? / [11:30, 14/5/2026] Raul Bustamante: No resetearlo a 1 después del cierre / [14:33, 14/5/2026] ViviLavin: Raúl, estuvimos revisando y haciendo pruebas con varias versiones, 2.1.9, 2.2.8, 2.3.014, qué son las que tienen más terminales y la 2.5.023 y en ninguna de ellas está el cambio de que el cierre no resetee el nro. de comprobante, es decir, en todas ellas, el nro. de comprobante después del cierre vuelve a 1. ¿hacemos el cambio?. no es invasivo. Cuéntame

| ID | WBS | Task | Duration | Start | Finish | Predecessors | Complete | Remaining | Total slack | Free slack | Constraint | Resources | Work | Actual work | Text1 |
| --- | --- | --- | --- | --- | --- | --- | --- | --- | --- | --- | --- | --- | --- | --- | --- |
| 171 | 1.5.6 | **RE: Actualización Tabla de Bines** | 14d? | 2026-05-14 A | 2026-06-03 |  | 41% | 8.2d? | 124d |  |  | Erich | 129h | 23.67h |  |
| 172 | 1.5.6.1 | Recepción del requerimiento | 0.12d? | 2026-05-14 A | 2026-05-14 A |  | 100% |  |  |  | start no earlier than 2026-05-14 |  | 1h | 1h |  |
| 173 | 1.5.6.2 | Ejecución del proceso de actualización Desa POS | 1d? | 2026-05-19 A | 2026-05-19 A | 172 | 100% |  |  |  | start no earlier than 2026-05-19 | Roberto; Viviana | 16h | 16h |  |
| 174 | 1.5.6.3 | Ejecución del proceso de actualización Desa PinPad | 1d? | 2026-05-14 | 2026-05-15 | 172 |  |  | 136.88d |  |  |  |  |  |  |
| 175 | 1.5.6.4 | Ejecución del proceso de actualización Prod | 1d? | 2026-06-01 A | 2026-06-01 A | 173, 174 | 100% |  |  |  | start no earlier than 2026-06-01 |  |  |  |  |
| 176 | 1.5.6.5 | Plan de actualización - Piloto | 1d? | 2026-06-02 | 2026-06-02 | 175 |  |  | 124d | 0d |  |  |  |  |  |
| 177 | 1.5.6.6 | Masificación | 1d? | 2026-06-03 | 2026-06-03 | 176 |  |  | 124d |  |  |  |  |  |  |
| 178 | 1.5.7 | **Actualización OTA en Pinpad Walmart Conce** | 5d? | 2026-05-14 A | 2026-05-20 |  | 94% | 0.29d? | 133d |  |  |  | 17h | 16h |  |
| 179 | 1.5.7.1 | Recepción solicitud | 0.12d | 2026-05-14 A | 2026-05-14 |  |  | 0.12d | 137.88d |  | start no earlier than 2026-05-14 |  | 1h |  |  |
| 180 | 1.5.7.2 | Actualización de OTA en Conce | 1d? | 2026-05-19 A | 2026-05-19 A | 179 | 100% |  |  |  | start no earlier than 2026-05-19 | German | 8h | 8h |  |
| 181 | 1.5.7.3 | Envío de informe técnico | 1d? | 2026-05-20 A | 2026-05-20 A | 180 | 100% |  |  |  |  | Viviana | 8h | 8h |  |
| 182 | 1.5.8 | **Ayuda activación de parámetros** | 2d? | 2026-05-26 A | 2026-05-27 A |  | 100% |  |  |  |  |  | 18h | 18h |  |
| 183 | 1.5.8.1 | Recepción solicitud | 0.12d | 2026-05-26 A | 2026-05-26 A |  | 100% |  |  |  | start no earlier than 2026-05-14 |  | 1h | 1h | Sebastian QA |
| 184 | 1.5.8.2 | cambio parámetros | 0.12d? | 2026-05-26 A | 2026-05-26 A | 183, 187, 197, 210 | 100% |  |  |  | start no earlier than 2026-05-19 | Viviana | 1h | 1h |  |
| 185 | 1.5.8.3 | Reunión aclaración de dudas | 1d? | 2026-05-27 A | 2026-05-27 A | 184 | 100% |  |  |  | start no earlier than 2026-05-27 | German; Viviana | 16h | 16h |  |
| 186 | 1.5.9 | **Problema WOM con app ver 2.5.022** | 18d? | 2026-05-26 A | 2026-06-18 A |  | 100% |  |  |  |  |  | 36h | 36h |  |
| 187 | 1.5.9.1 | Recepción solicitud | 0.12d | 2026-05-26 A | 2026-05-26 A |  | 100% |  |  |  | start no earlier than 2026-05-14 |  | 1h | 1h | Marlen |
| 188 | 1.5.9.2 | Reunión con Getnet | 0.12d? | 2026-05-26 A | 2026-05-26 A | 187, 197, 210 | 100% |  |  |  |  | German; Roberto; Viviana | 3h | 3h |  |
| 189 | 1.5.9.3 | análisis del problema | 2d? | 2026-05-27 A | 2026-05-28 A | 188 | 100% |  |  |  | finish no earlier than 2026-05-28 | German; Viviana | 32h | 32h |  |
| 190 | 1.5.9.4 | Recepción simulador Getservicios | 4d | 2026-05-29 A | 2026-06-03 A | 188 | 100% |  |  |  | start no earlier than 2026-05-29 |  |  |  |  |
| 191 | 1.5.9.5 | Pruebas para reproducir el problema | 1.3d? | 2026-06-01 A | 2026-06-04 A | 190 | 100% |  |  |  | finish no earlier than 2026-06-04 |  |  |  |  |
| 192 | 1.5.9.6 | corrección del problema | 1d? | 2026-06-05 A | 2026-06-05 A | 191 | 100% |  |  |  |  |  |  |  |  |
| 193 | 1.5.9.7 | Pruebas | 1d? | 2026-06-08 A | 2026-06-08 A | 192 | 100% |  |  |  |  |  |  |  |  |
| 194 | 1.5.9.8 | Reunión con WOM | 1d? | 2026-06-12 A | 2026-06-12 A | 193 | 100% |  |  |  | start no earlier than 2026-06-12 |  |  |  |  |
| 195 | 1.5.9.9 | Entrega a Getnet en ver. 2.5.026 | 1d? | 2026-06-18 A | 2026-06-18 A | 193 | 100% |  |  |  | start no earlier than 2026-06-18 |  |  |  |  |

Notes:
- 171: Saludos Vivi, adjunto la Tabla de Bines Abril 2026, para ser distribuida en los POS Ingenicos Productivos. / Se debe coordinar el plan de actualización, partiendo con un piloto y luego masificar
- 174: Pendiente definir estrategia con Luis
- 175: Se libera nueva tabla para POS productivo enviado por Raúl
- 179: Johan, / ~ / ~~ Según lo conversado, favor enviar planificación de actualización de equipo de WALMART, te adjunto las sucursales que se deben actualizar: / ~ / num_cmrnum_suc_cmrrazon_socialsucursalnum_serienum_tml_lgcdireccioncomunaregion 364706429003 ADMINISTRADORA DE SUPERMERCADOS EXPRESSCONCEPCION BELLAVISTA25AQKD667757 30003408 BELLAVISTA 1273~~~~~~ CONCEPCIONVIII REGION DEL BIO-BIO 364706429003 ADMINISTRADORA DE SUPERMERCADOS EXPRESSCONCEPCION BELLAVISTA25AQKD667783 30003406 BELLAVISTA 1273~~~~~~ CONCEPCIONVIII REGION DEL BIO-BIO 364706429003 ADMINISTRADORA DE SUPERMERCADOS EXPRESSCONCEPCION BELLAVISTA25AQKD667782 30003405 BELLAVISTA 1273~~~~~~ CONCEPCIONVIII REGION DEL BIO-BIO 364596429582 WALMART CHILE MAYORISTAS LIMITADACentral Mayorista Quilpue25AQKD669775 30003410 RAMON FREIRE 1351~~~~~~ QUILPUEV REGION DE VALPARAISO 364596429582 WALMART CHILE MAYORISTAS LIMITADACentral Mayorista Quilpue25AQKD667825 30003409 RAMON FREIRE 1351~~~~~~ QUILPUEV REGION DE VALPARAISO 364641411800 ADMINISTRADORA DE SUPERMERCADOS HIPER LIALAMEDA259JKD655053 30003049 PADRE ALBERTO HURTADO 060~~~~~~~ ESTACION CENTRALREGION METROPOLITANA 364641411800 ADMINISTRADORA DE SUPERMERCADOS HIPER LIALAMEDA259JKD656459 30003050 PADRE ALBERTO HURTADO 060~~~~~~~ ESTACION CENTRALREGION METROPOLITANA 364597429002 EKONO LIMITADAPENAFLOR25AQKD669846 30003411 VICUNA MACKENNA 1918~~~~~~ PENAFLORREGION METROPOLITANA ~ / ~ / ~~ Una vez tengamos las fechas, vamos a informar al comercio para coordinar la visita.
- 183: Estimados todos: / Primero que todo, espero que se encuentren muy bien! / @Viviana Alejandra Lavin Burgos~agradeceré mucho tu ayuda para poder activar parámetros del POS que mencionaré a continuación, que ha sido asignado a @Macarena Ponce Pegueroles / SN 2334KD809665 / TID 40000039A / Revisamos en TEM, y a pesar de que tiene ciertos parámetros activos (boleta, vuelto, etc.) no lo está tomando al hacer pruebas en su aplicativo. Necesitaría activar: boleta, vendedor, vuelto.
- 187: Buenos días. Hace un mes se realizó cambio de versión a WOM a la 2.5.022/ Por favor nos puedan apoyar para validar a través de qué app (Getnet o getservicios) se realizaron las transacciones indicadas en mail más abajo / Quedo atenta/ Gracias
- 189: A la espera de poder hacer pruebas con simulador de Getservicios
- 191: Solicitud de ayuda a Fran para poder obtener txs. aprobadas
- 192: Se envía mail a Getnet indicando que se encontro una mejora y de debe definir sobre que versión aplicarla

| ID | WBS | Task | Type | Duration | Start | Finish | Predecessors | Complete | Remaining | Total slack | Free slack | Constraint | Resources | Work | Actual work | Text1 |
| --- | --- | --- | --- | --- | --- | --- | --- | --- | --- | --- | --- | --- | --- | --- | --- | --- |
| 196 | 1.5.10 | **Actualización de equipo en Hualpen** |  | 4d? | 2026-05-25 A | 2026-05-28 A |  | 100% |  |  |  |  |  | 9h | 9h | Luis |
| 197 | 1.5.10.1 | Recepción solicitud |  | 0.12d | 2026-05-25 A | 2026-05-25 A |  | 100% |  |  |  | start no earlier than 2026-05-14 |  | 1h | 1h |  |
| 198 | 1.5.10.2 | Ejecución |  | 1d? | 2026-05-28 A | 2026-05-28 A | 197, 210 | 100% |  |  |  | start no earlier than 2026-05-28 | Roberto | 8h | 8h |  |
| 199 | 1.5.10.3 | Envío de informe técnico de visita | milestone | 0d | 2026-05-28 A | 2026-05-28 A | 198 | 100% |  |  |  | finish no earlier than 2026-05-25 | Viviana [6.2%] |  |  |  |
| 200 | 1.5.11 | **Actualización de equipos SMU QA** |  | 1d? | 2026-05-25 A | 2026-05-25 A |  | 100% |  |  |  |  |  | 3h | 3h | Luis |
| 201 | 1.5.11.1 | Ejecución |  | 0.38d? | 2026-05-25 A | 2026-05-25 A |  | 100% |  |  |  | start no earlier than 2026-05-25 | Roberto | 3h | 3h |  |
| 202 | 1.5.11.2 | Envío de informe técnico de visita | milestone | 0d | 2026-05-25 A | 2026-05-25 A | 201 | 100% |  |  |  | finish no earlier than 2026-05-25 | Viviana [6.2%] |  |  |  |
| 203 | 1.5.12 | **Actualización de URL Pago QR** |  | 10.3d? | 2026-05-25 A | 2026-06-08 |  | 44% | 5.76d? | 121.7d |  |  |  | 9h | 9h | Raúl |
| 204 | 1.5.12.1 | Recepción de cambio |  | 0.12d? | 2026-05-25 A | 2026-05-25 A |  | 100% |  |  |  | start no earlier than 2026-05-25 |  | 1h | 1h |  |
| 205 | 1.5.12.2 | Corrección del documento |  | 1d? | 2026-05-27 A | 2026-05-27 A | 204, 215, 219 | 100% |  |  |  | start no earlier than 2026-05-27 |  |  |  | Felipe Rubin |
| 206 | 1.5.12.3 | Cambio de credenciales ambiente Des |  | 1d? | 2026-05-28 A | 2026-05-28 A | 205 | 100% |  |  |  |  | German | 8h | 8h | Felipe Rubin |
| 207 | 1.5.12.4 | Ejecución del cambio y pruebas |  | 5.3d? | 2026-05-29 A | 2026-06-05 | 206 | 30% | 3.71d? | 121.7d | 0d | finish no earlier than 2026-06-04 |  |  |  |  |
| 208 | 1.5.12.5 | Entrega a Getnet para pruebas |  | 1d? | 2026-06-05 | 2026-06-08 | 207 |  |  | 121.7d |  |  |  |  |  |  |
| 209 | 1.5.13 | **Creación de parámetros para Debito en cuotas** |  | 4d? | 2026-06-19 A | 2026-06-24 |  | 68% | 1.28d? | 109d |  |  |  | 25h | 17h |  |
| 210 | 1.5.13.1 | Recepción solicitud |  | 0.12d | 2026-06-19 A | 2026-06-19 A |  | 100% |  |  |  | start no earlier than 2026-05-14 |  | 1h | 1h | Fran |
| 211 | 1.5.13.2 | Ejecución de cambio en TEM Desa |  | 1d? | 2026-06-22 A | 2026-06-22 A | 210 | 100% |  |  |  | start no earlier than 2026-06-22 | German | 8h | 8h |  |
| 212 | 1.5.13.3 | Envío de aviso a Fran que parámetros están creados |  | 1d? | 2026-06-23 A | 2026-06-23 A | 211 | 100% |  |  |  |  | Viviana | 8h | 8h |  |
| 213 | 1.5.13.4 | Ejecución de cambio en los otros ambientes |  | 1d? | 2026-06-24 | 2026-06-24 | 212 |  |  | 109d |  | start no earlier than 2026-06-22 | German | 8h |  |  |
| 214 | 1.5.14 | **Actualización código de comercio terminales Blue Express** |  | 0.25d | 2026-07-02 A | 2026-07-02 A |  | 100% |  |  |  |  |  |  |  |  |
| 215 | 1.5.14.1 | Recepción de cambio | milestone | 0d | 2026-07-02 A | 2026-07-02 A |  | 100% |  |  |  | start no earlier than 2026-05-25 |  |  |  |  |
| 216 | 1.5.14.2 | Ejecución proceso |  | 1h | 2026-07-02 A | 2026-07-02 A | 215, 219 | 100% |  |  |  |  |  |  |  |  |
| 217 | 1.5.14.3 | Envío de mail con resultado de proceso |  | 1h | 2026-07-02 A | 2026-07-02 A | 216 | 100% |  |  |  |  |  |  |  |  |
| 218 | 1.5.15 | **Bloqueo de terminales - RE: Informe GPS Ingenico** |  | 1d? | 2026-07-03 A | 2026-07-03 |  | 20% | 0.8d? | 103d |  |  |  |  |  |  |
| 219 | 1.5.15.1 | Recepción del requerimiento | milestone | 0d | 2026-07-03 A | 2026-07-03 A |  | 100% |  |  |  | start no earlier than 2026-05-25 |  |  |  |  |
| 220 | 1.5.15.2 | Revisión y análisis |  | 1d? | 2026-07-03 A | 2026-07-03 | 219 | 20% | 0.8d? | 103d |  |  |  |  |  |  |

Notes:
- 197: Johan, / ~ / ~~ Según lo conversado, necesito que se coordine equipo para ir a la siguiente sucursal para actualizar el OTA y la APP de pago, necesito tener la fecha hoy de cuando asistirán
- 198: Coordinado por Roberto / Hola Luis: / Buenas tardes, / Te comento que el equipo de Hualpén quedó actualizado y configurado. / Respecto al alcance que hacia la jefa de local no funciona era respecto al vuelto (no figuraba en voucher), mismo caso que vimos en Peñaflor. Se le explicó que eso estaba resuelto, y también se le comentó que las tarjetas, por el momento que no dan vuelto, es tarjetas BCI Match y Falabella. / (el problema es entre Evertec y Walmart)
- 201: Actualización de terminales a la versión OTA 1.22.0. / Actualización de app Pinpad a la versión 1.30.31 30000102 SN: 251BKD621730 / 30000103 SN: 245WKD600668 / 30000121 SN: 251BKD621573 / 30000122 SN: 251BKD621905 / 30000124 SN: 251BKD621865 / 30000139 SN: 25AQKD669909 / Acciones realizadas: / Los terminales actualizados son:
- 205: Una URL estaba mal configurada
- 207: Cambio de parámetros en TEM
- 215: @Germán Francisco Javier Encina Fuentes, @Viviana Alejandra Lavin Burgos~favor su ayuda con la actualización de numero comercio. / Necesitamos que sea cargado a la brevedad. / Nos confirman cuando carga este OK
- 219: Johan nos reenvió un mail que le envió Alvaro / Hola Johan! / Necesito ahora que ningún POS pueda operar fuera de Chile a excepciones de desarrollo. ¿Cómo puedo hacer esto desde el TMS de Ingenico? / Saludos,
- 220: Se consulta a Ingenico si es posible hacer lo solicitado por Alvaro. / Está en revisión de Isabela

| ID | WBS | Task | Type | Duration | Start | Finish | Predecessors | Complete | Remaining | Total slack | Free slack | Constraint | Resources | Work | Actual work |
| --- | --- | --- | --- | --- | --- | --- | --- | --- | --- | --- | --- | --- | --- | --- | --- |
| 221 | 1.5.16 | **Uso de webview en POS** |  | 3d? | 2026-07-27 A | 2026-07-29 A |  | 100% |  |  |  |  |  |  |  |
| 222 | 1.5.16.1 | Recepción de requerimiento | milestone | 0d | 2026-07-27 A | 2026-07-27 A |  | 100% |  |  |  | start no earlier than 2026-07-27 | German; Viviana |  |  |
| 223 | 1.5.16.2 | Revisión y solución del problema |  | 1d? | 2026-07-27 A | 2026-07-27 A | 222 | 100% |  |  |  |  |  |  |  |
| 224 | 1.5.16.3 | Entrega de solución TEM Prod y HEM Desa |  | 1d? | 2026-07-28 A | 2026-07-28 A | 223 | 100% |  |  |  | start no earlier than 2026-07-28 |  |  |  |
| 225 | 1.5.16.4 | Configuración en TEM UAT |  | 1d? | 2026-07-29 A | 2026-07-29 A | 224 | 100% |  |  |  |  |  |  |  |
| 226 | 1.5.17 | **Solicitud de creación y modif. De parámetros** |  | 4.12d? | 2026-08-05 A | 2026-08-11 |  | 4% | 3.96d? | 77.88d |  |  |  |  |  |
| 227 | 1.5.17.1 | Recepción de requerimiento | milestone | 0d | 2026-08-05 A | 2026-08-05 A |  | 100% |  |  |  | start no earlier than 2026-08-05 |  |  |  |
| 228 | 1.5.17.2 | revisión y mail con dudas |  | 1h | 2026-08-06 A | 2026-08-06 A | 227 | 100% |  |  |  | start no earlier than 2026-08-06 |  |  |  |
| 229 | 1.5.17.3 | respuesta de Getnet |  | 1d? | 2026-08-06 | 2026-08-07 | 228 |  |  | 77.88d | 0d |  |  |  |  |
| 230 | 1.5.17.4 | ejecución del cambio y pruebas |  | 1d? | 2026-08-07 | 2026-08-10 | 229 |  |  | 77.88d | 0d |  |  |  |  |
| 231 | 1.5.17.5 | Entrega a Getnet |  | 1d? | 2026-08-10 | 2026-08-11 | 230 |  |  | 77.88d |  |  |  |  |  |
| 232 | 1.5.18 | **Solicitud de creación de usuarios HEM UAT- Sebastián** |  | 2d | 2026-08-12 A | 2026-08-13 A |  | 100% |  |  |  |  |  |  |  |
| 233 | 1.5.18.1 | Recepción de solicitud | milestone | 0d | 2026-08-12 A | 2026-08-12 A |  | 100% |  |  |  | start no earlier than 2026-08-12 | German |  |  |
| 234 | 1.5.18.2 | Ejecución de cambio |  | 0.5d | 2026-08-13 A | 2026-08-13 A | 233 | 100% |  |  |  | start no earlier than 2026-08-13 |  |  |  |
| 235 | 1.5.18.3 | aviso a Getnet |  | 0.5d | 2026-08-13 A | 2026-08-13 A | 234 | 100% |  |  |  |  |  |  |  |
| 236 | 1.5.19 | **Solicitud de creación de usuario en TEM - Evelyn** |  | 4d | 2026-08-13 A | 2026-08-19 A |  | 100% |  |  |  |  |  | 4h | 4h |
| 237 | 1.5.19.1 | Recepción de solicitud | milestone | 0d | 2026-08-19 A | 2026-08-19 A |  | 100% |  |  |  | start no earlier than 2026-08-19 |  |  |  |
| 238 | 1.5.19.2 | Ejecución de cambio |  | 0.5d | 2026-08-13 A | 2026-08-13 A | 237 | 100% |  |  |  | start no earlier than 2026-08-13 | Roberto | 4h | 4h |
| 239 | 1.5.19.3 | aviso a Getnet | milestone | 0d | 2026-08-13 A | 2026-08-13 A | 238 | 100% |  |  |  |  |  |  |  |
| 240 | 1.5.20 | **Solicitud de creación de parámetros - Fran** |  | 9d? | 2026-08-05 A | 2026-08-17 A |  | 100% |  |  |  |  |  | 16h | 16h |
| 241 | 1.5.20.1 | Recepción de solicitud | milestone | 0d | 2026-08-05 A | 2026-08-05 A |  | 100% |  |  |  | start no earlier than 2026-08-19 |  |  |  |
| 242 | 1.5.20.2 | Ejecución de cambio |  | 2d | 2026-08-06 A | 2026-08-07 A | 241 | 100% |  |  |  | finish no earlier than 2026-08-07 | German | 16h | 16h |
| 243 | 1.5.20.3 | aviso a Getnet | milestone | 0d | 2026-08-07 A | 2026-08-07 A | 242 | 100% |  |  |  |  |  |  |  |
| 244 | 1.5.20.4 | Paso a producción TEM y HEM |  | 1d? | 2026-08-17 A | 2026-08-17 A | 243 | 100% |  |  |  | start no earlier than 2026-08-17 |  |  |  |

Notes:
- 224: * .; ; .; ; Se envía mail con acciones a realizar / Para hacer uso de webview en DX8000 se requiere: / ~ / 1.Que el POS tenga una versión de OTA >= a 1.19. En caso que sea menor, debe ser actualizado el OTA / 2.Se debe instalar en el POS los siguientes archivos: / a.1.9.0_UNISOC_SL8541E_A10_CRF_GetnetChile.uns. / b.GRF para webview.apk. Este requiere que este firmado para poder ser instalado en POS Productivos. / Configuración HEM Desa y TEM Prod
- 233: Junto con saludar, agradeceremos de su ayuda para poder tener acceso a HEM en ambiente UAT para los siguientes usuarios: / ·Priscilla Rossana Aguilera Rodríguez / ·Marco Hernán Berríos Ortiz / ·Sebastián Rodrigo Cárdenas Véliz

| ID | WBS | Task | Type | Duration | Start | Finish | Predecessors | Complete | Remaining | Total slack | Constraint | Resources | Work | Actual work |
| --- | --- | --- | --- | --- | --- | --- | --- | --- | --- | --- | --- | --- | --- | --- |
| 245 | 1.5.21 | **Solicitud de creación de usuario en TEM - Carla** |  | 0.5d | 2026-08-10 A | 2026-08-10 A |  | 100% |  |  |  |  | 4h | 4h |
| 246 | 1.5.21.1 | Recepción de solicitud | milestone | 0d | 2026-08-10 A | 2026-08-10 A |  | 100% |  |  | start no earlier than 2026-08-19 |  |  |  |
| 247 | 1.5.21.2 | Ejecución de cambio |  | 0.5d | 2026-08-10 A | 2026-08-10 A | 246 | 100% |  |  | start no earlier than 2026-08-10 | German | 4h | 4h |
| 248 | 1.5.21.3 | aviso a Getnet | milestone | 0d | 2026-08-10 A | 2026-08-10 A | 247 | 100% |  |  |  |  |  |  |
| 249 | 1.5.22 | **Solicitud de creación de usuario en TEM - Leslie** |  | 5d | 2026-08-10 A | 2026-08-14 A |  | 100% |  |  |  |  | 40h | 40h |
| 250 | 1.5.22.1 | Recepción de solicitud | milestone | 0d | 2026-08-10 A | 2026-08-10 A |  | 100% |  |  | start no earlier than 2026-08-19 |  |  |  |
| 251 | 1.5.22.2 | Ejecución de cambio |  | 5d | 2026-08-10 A | 2026-08-14 A | 250 | 100% |  |  | finish no earlier than 2026-08-14 | German | 40h | 40h |
| 252 | 1.5.22.3 | aviso a Getnet | milestone | 0d | 2026-08-14 A | 2026-08-14 A | 251 | 100% |  |  |  |  |  |  |
| 253 | 1.5.23 | **Problema app con Tarjeta Mercado Pago** |  | 92d? | 2026-05-04 A | 2026-09-11 |  | 64% | 33.45d? | 54d |  |  | 8h | 8h |
| 254 | 1.5.23.1 | Recepción del incidente | milestone | 0d | 2026-08-13 A | 2026-08-13 A |  | 100% |  |  | start no earlier than 2026-08-13 |  |  |  |
| 255 | 1.5.23.2 | Revisión y pruebas |  | 1d? | 2026-08-13 A | 2026-08-13 A | 254 | 100% |  |  |  | German | 8h | 8h |
| 256 | 1.5.23.3 | conseguir tarjeta y wallet Mercado Pago |  | 3d? | 2026-08-17 A | 2026-08-19 A | 255 | 100% |  |  | start no earlier than 2026-08-17 |  |  |  |
| 257 | 1.5.23.4 | Pruebas y correcciones |  | 1d? | 2026-08-20 A | 2026-08-20 A | 256 | 100% |  |  |  |  |  |  |
| 258 | 1.5.23.5 | entrega a Getnet |  | 0.5d | 2026-08-21 A | 2026-08-21 A | 257 | 100% |  |  |  |  |  |  |
| 259 | 1.5.23.6 | Firma app ver 2.5.27 |  | 0.5d | 2026-08-21 A | 2026-08-21 A | 258 | 100% |  |  |  |  |  |  |
| 260 | 1.5.23.7 | Instalación en comercio |  | 1d? | 2026-08-24 | 2026-08-24 | 259 |  |  | 68d |  |  |  |  |
| 261 | 1.5.23.8 | Problema con impresión voucher v/s entrega de respuesta |  | 1d? | 2026-09-11 A | 2026-09-11 A |  | 100% |  |  | start no earlier than 2026-09-11 |  |  |  |
| 262 | 1.5.23.9 | <Tarea nueva> |  | 1d? | 2026-05-04 | 2026-05-04 |  |  |  | 145d |  |  |  |  |
| 263 | 1.5.23.10 | <Tarea nueva> |  | 1d? | 2026-05-04 | 2026-05-04 |  |  |  | 145d |  |  |  |  |
| 264 | 1.5.23.11 | <Tarea nueva> |  | 1d? | 2026-05-04 | 2026-05-04 |  |  |  | 145d |  |  |  |  |
| 265 | 1.5.24 | **Uso de API para consultar datos del comercio** |  | 2d? | 2026-08-27 A | 2026-08-28 A |  | 100% |  |  |  |  |  |  |
| 266 | 1.5.24.1 | Recepción de solicitud | milestone | 0d | 2026-08-27 A | 2026-08-27 A |  | 100% |  |  | start no earlier than 2026-08-27 |  |  |  |
| 267 | 1.5.24.2 | revisión y análisis |  | 1d? | 2026-08-27 A | 2026-08-27 A | 266 | 100% |  |  |  |  |  |  |
| 268 | 1.5.24.3 | entrega a Getnet |  | 1d? | 2026-08-28 A | 2026-08-28 A | 267 | 100% |  |  |  |  |  |  |

Notes:
- 250: Solicitud de creación de 8 usuarios
- 253: El problema sucedía con las tarjetas prepago por el manejo de vuelto
- 259: Elias decide firmar sin hacer pruebas
- 260: Revisamos y está versión no ha sido asociada a ningún terminal. Pregunté a Elias y no se ha recibido respuesta de parte de ellos
- 261: En cuanto al uso integrado encontraron una diferencia con la 2.5.022, ya que la nueva versión no envía la respuesta de aprobado hasta que el cajero pincha la impresión del 2do comprobante. Esto ya había quedado solucionado con la 2.5.022 pero veo que no esta implementado en la 2.5.027
- 266: el día 26/08 Raúl me pregunta por WS al respecto y hoy envió mail / Esta es la API, puede usarse el TID o es un identificador interno que debe definirse antes? / https://estate-manager-nar01.preprod.icloud.ingenico.com/emapi/dms/terminals/signature

| ID | WBS | Task | Type | Duration | Start | Finish | Predecessors | Complete | Remaining | Total slack | Free slack | Constraint | Resources | Work | Actual work |
| --- | --- | --- | --- | --- | --- | --- | --- | --- | --- | --- | --- | --- | --- | --- | --- |
| 269 | 1.5.25 | **Actualización del valor del IVA para terminales** |  | 33.5d? | 2026-08-27 A | 2026-10-14 |  | 78% | 7.5d? | 32.5d |  |  |  | 12h | 12h |
| 270 | 1.5.25.1 | Recepción de requerimiento | milestone | 0d | 2026-08-27 | 2026-08-27 |  |  |  | 66d |  | start no earlier than 2026-08-27 |  |  |  |
| 271 | 1.5.25.2 | Analisis |  | 1d | 2026-08-27 A | 2026-08-27 A | 270 | 100% |  |  |  |  |  |  |  |
| 272 | 1.5.25.3 | Envío de mail con consultas a Raúl |  | 0.2d | 2026-08-28 A | 2026-08-28 A | 271 | 100% |  |  |  |  |  |  |  |
| 273 | 1.5.25.4 | Recepción respuesta y reu aclaratoria |  | 2d | 2026-08-31 A | 2026-09-01 A | 272 | 100% |  |  |  | finish no earlier than 2026-09-01 |  |  |  |
| 274 | 1.5.25.5 | Implementación del cambio |  | 1.5d | 2026-09-09 A | 2026-09-10 A | 273 | 100% |  |  |  | start no earlier than 2026-09-09 | Erich | 12h | 12h |
| 275 | 1.5.25.6 | Pruebas |  | 0.5d | 2026-09-10 A | 2026-09-10 A | 274 | 100% |  |  |  |  |  |  |  |
| 276 | 1.5.25.7 | Aviso a Raúl que ya está OK | milestone | 0d | 2026-09-15 A | 2026-09-15 A | 275 | 100% |  |  |  | start no earlier than 2026-09-15 |  |  |  |
| 277 | 1.5.25.8 | Reunión para pruebas en conjunto |  | 1d? | 2026-10-13 | 2026-10-13 | 276 |  |  | 32.5d | 0d | start no earlier than 2026-10-13 |  |  |  |
| 278 | 1.5.25.9 | Paso a producción |  | 0.5d | 2026-10-14 | 2026-10-14 | 277 |  |  | 32.5d |  |  |  |  |  |
| 279 | 1.5.26 | **APP MI ENTRADA CHILE SPA 77956077-5** |  | 2.5d? | 2026-09-16 | 2026-09-21 |  |  |  | 49.5d |  |  |  | 8h |  |
| 280 | 1.5.26.1 | Recepción del requerimiento | milestone | 0d | 2026-09-16 | 2026-09-16 |  |  |  | 49.5d | 0d | start no earlier than 2026-09-16 |  |  |  |
| 281 | 1.5.26.2 | Revisión, creación de script y pruebas AUT |  | 1d | 2026-09-16 | 2026-09-16 | 280 |  |  | 49.5d | 0d |  | Erich | 8h |  |
| 282 | 1.5.26.3 | Aviso a Getnet | milestone | 0d | 2026-09-16 | 2026-09-16 | 281 |  |  | 49.5d | 0d |  |  |  |  |
| 283 | 1.5.26.4 | Preparación script para producción y firma |  | 0.5d | 2026-09-17 | 2026-09-17 | 282 |  |  | 49.5d | 0d |  |  |  |  |
| 284 | 1.5.26.5 | Prueba en producción |  | 1d? | 2026-09-17 | 2026-09-21 | 283 |  |  | 49.5d |  |  |  |  |  |
| 285 | 1.5.27 | **Soporte por problema equipo SMU** |  | 1d? | 2026-09-24 | 2026-09-24 |  |  |  | 46d |  |  |  | 8h |  |
| 286 | 1.5.27.1 | Visita a terreno |  | 1d? | 2026-09-24 | 2026-09-24 |  |  |  | 46d |  | start no earlier than 2026-09-24 | Roberto | 8h |  |
| 287 | 1.5.28 | **Eliminar opción de anulación en POS de Americar** |  | 3d? | 2026-10-06 A | 2026-10-08 A |  | 100% |  |  |  |  | Roberto | 24h | 24h |
| 288 | 1.5.28.1 | recepción solicitud |  | 1d? | 2026-10-06 A | 2026-10-06 A |  | 100% |  |  |  | start no earlier than 2026-10-06 |  |  |  |
| 289 | 1.5.28.2 | ejecución del cambio |  | 1d? | 2026-10-08 A | 2026-10-08 A | 288 | 100% |  |  |  | start no earlier than 2026-10-08 |  |  |  |

Notes:
- 269: Modificar IVA a 1.5%, y activar Flag IVA FERIANTE / Actualizar valor CLAVE COMERCIO con valor que viene en novedad Clave Comercio / Esto para 2 MCC Ferias: 5499 y 7399
- 276: Se solicita archivo novedades generado por Getnet para cerrar las pruebas
- 280: Elias, Cristopher / ~~~~~~~~~~~~~ En ausencia de Andres, favor su ayuda con requerimiento de Ronny para validar opciones o factibilidad técnica. Cliente usa su app en nuestros SmartPOS pero en ocasiones los cajeros inician la venta directo en la app Getnet, esto genera descuadres en los totales vendidos.~ / ~ / ¿Existe alguna forma de bloquear el acceso a la app Getnet?, por ejemplo a través de una clave de ingreso (para que solo sea usada por el jefe de caja) o no dejar visible en el launcher la app Getnet para que no la usen pero que la comunicación entre apps siga funcionando. / ~
- 283: En pruebas encontramos que al bloquera la app queda todo el equipo bloqueado. Nos contactamos con Ingenico para ver si hay otra alternativa de solo bloquear la app
- 288: Roberto, Johan, Viviana, buenas tardes. / Por favor su ayuda para eliminar en todos los POS físicos del grupo AMERICAR, la opción de anulación de transacciones, según lo solicitado por comercio. / Grupo AMERICAR: / 91.139.000-0 COSECHE S.S. / 79.853.470-k AUTOMOTRIZ CORDILLERA S.A. / 77.461.290-4 AUTOMOTRIZ DENALI SPA / 77.008.670-1 PORTILLO S.A.
